PROPOSAL SUBMITTAL,APPROVAL SUBMITTAL,INFORMATION ONLY SUBMITTAL,"AS-BUILTS / 
DATA BOOK","STELLA MARIS
DOC. / DRAWING NO.","CAMERON 
DOC. / DRAWING NO.",DESCRIPTION,DOCUMENT NOTES," DATA
 CODE",REV NO.,REVISION COMMENTS,"INITIAL SUBMITTAL DATE 
(KOM / S ± WKS )1",PLANNED INITIAL SUBMITTAL DATE ,ACTUAL SUBMITTAL DATE,STELLA MARIS TRANSMITTAL NO.,PLANNED RETURN DATE,ACTUAL RETURN DATE,CUSTOMER TRANSMITTAL NO.,CLIENT APPROVAL STATUS 2
MASTER DATA SCHEDULE
,X,,,2997-DM-MDR,,Master Document Register and Schedule,,MDR,01,,KOM+4,5/30/19,31-May-19,2997-ET-SM-CAM-02,7-Jun-19
COMMERICAL DATA
,,,,2997-QC-ITP,,Inspection and Test Plan (ITP),,ITP
,X,,,2997-PM-MDS,,Manufacturing and Delivery Schedule,"Drawings; Certification, Procurement; Fabrication; Coating; Assembly; Testing; Final Inspection; Load-out; Vendor Data Book",MDS,,,KOM+5,6/6/19,31-May-19,2997-ET-SM-CAM-02,7-Jun-19
,,,X,2997-PM-MRB-01,,Manufacturer's Data/Record Book ,,MRB,,,S+4,10/7/19
 DRAWINGS
,X,,X,,SK-123234-07-04,General Assembly -Local Control Panel,General Arrangement and Assembly Detail drawings are combine into one drawing,DWG,A,,KOM+3,5/23/19,17-May-19,2997-ET-SM-CAM-01,31-May-19
,,,,,,,,DWG,B,Incorperated Cameron comments. Updated layout and control panel,,,01-Jul-19,2997-ET-SM-CAM-04,15-Jul-19
,X,,X,,SK-123234-07-05,Pneumatic/Hydraulic Schematic - Local Control Panel,,DWG,,,KOM+3,5/23/19,17-May-19,2997-ET-SM-CAM-01,31-May-19
,X,,,,X-234250-19,Nametag Details  - Local Control Panel,,DWG,,,KOM+7,6/20/19
,X,,,,,Equipment Identification Nametag  - Local Control Panel,,DWG,,,KOM+7,5/30/19
,X,,,,,Operating Instruction Tag - Local Control Panel,,DWG,,,KOM+7,5/30/19
,,,,CAM-2997-LCP-01,,Fabrication - Local Control Panel,,DWG,,,KOM+6,6/13/19
,,,,CAM-2997-LCP-02,,Fabrication - Control Plate,,DWG,,,KOM+6,6/13/19
,,,,CAM-2997-LCP-03,,Fabrication - Back Panel,,DWG,,,KOM+6,6/13/19
,,,,CAM-2997-LCP-04,,Fabrication -  Back Door Panel,,DWG,,,KOM+6,6/13/19
,,,,CAM-2997-LCP-05,,Fabrication - Font Door Panel,,DWG,,,KOM+6,6/13/19
,,,,CAM-2997-LCP-06,,Fabrication - Side Wall Panels,,DWG,,,KOM+6,6/13/19
,,,,CAM-2997-LCP-07,,Fabrication - Bulkhead Plate,,DWG,,,KOM+6,6/13/19
,,,,CAM-2997-LCP-08,,Fabrication - Roof Panel,,DWG,,,KOM+6,6/13/19
,X,,X,,SK-224813-07-06,Electrical Schematic - LCP,"LCP Control Panel, Ex d, and Ex e enclosures Electrical Schematics are combined into one drawing",DWG,,,KOM+4.5,6/4/19,14-Jun-19,2997-ET-SM-CAM-03,28-Jun-19
,X,,X,,SK-224813-07-04,General Assembly- LCP Ex d Enclosure,General Arrangement and Assembly Detail drawings are combine into one drawing,DWG,,,KOM+5,6/6/19,14-Jun-19,2997-ET-SM-CAM-03,28-Jun-19
,,,,CAM-2997-EXD-01,,Modification Detail - Local Control Panel Ex d Enclosure,,DWG,,,KOM+6,6/13/19
,X,,,,X-234353-07-01,Nametag Detail - Local Control Panel Ex d Enclosure,,DWG,,,KOM+7,6/20/19,01-Jul-19,2997-ET-SM-CAM-04,15-Jul-19
,X,,X,,SK-224821-05-04,General Assembly- LCP Ex e Enclosure,General Arrangement and Assembly Detail drawings are combine into one drawing,DWG,,,KOM+5,6/6/19,14-Jun-19,2997-ET-SM-CAM-03,28-Jun-19
,,,,CAM-2997-EXE-01,,Modification Detail - Local Control Panel Ex e Enclosure,,DWG,,,KOM+6,6/13/19
,X,,,,X-234353-07-02,Nametag Detail - Local Control Panel Ex e Enclosure,,DWG,,,KOM+7,6/20/19,01-Jul-19,2997-ET-SM-CAM-04,15-Jul-19
,X,,X,,SK-224818-07-06,Electrical Schematic - Remote Control Panel HMI,,DWG,,,KOM+4.5,6/4/19,14-Jun-19,2997-ET-SM-CAM-03,28-Jun-19
,X,,X,,SK-224818-07-04,General Assembly - Remote Control Panel HMI,,DWG,,,KOM+5,6/6/19,14-Jun-19,2997-ET-SM-CAM-03,28-Jun-19
,X,,,,X-234353-07-03,Nametag Detail - Remote Control Panel,,DWG,,,KOM+7,6/20/19
,X,,X,,SK-123234-07-01,Electrical Interconnect Diagram,,DWG,,,KOM+4.5,6/4/19,14-Jun-19,2997-ET-SM-CAM-03,28-Jun-19
,X,,,,SK-123234-07-02,Cable Tag Detail,,DWG,,,KOM+7,6/20/19
BOMs / SCHEDULES / DATA PACKS
,X,,X,,2346188-07,Top Level BOM,,BOM,,,KOM+4,5/30/19,31-May-19,2997-ET-SM-CAM-02,7-Jun-19
,X,,X,,2346188-07-01,Bill of Materials - Local Control Panel,,BOM,,,KOM+4,5/30/19,31-May-19,2997-ET-SM-CAM-02,7-Jun-19
,X,,X,,2346188-07-03,Bill of Materials - Local Control Panel Ex d Enclosure,,BOM,,,KOM+5,6/6/19,14-Jun-19,2997-ET-SM-CAM-03,28-Jun-19
,X,,X,,2346188-07-04,Bill of Materials - Local Control Panel Ex e Enclosure,,BOM,,,KOM+5,6/6/19,14-Jun-19,2997-ET-SM-CAM-03,28-Jun-19
,X,,X,,2346188-07-02,Bill of Materials - Remote Control Panel,,BOM,,,KOM+5,6/6/19,14-Jun-19,2997-ET-SM-CAM-03,28-Jun-19
